# 百知网项目进度计划

Schedule from MS Project, 2007-01-01 to 2011-08-11, A marks actual dates.
Mocha Software Co.,Ltd

## Calendars

- 标准: Mon-Fri 08:00-12:00, 13:00-17:00; Sat-Sun off. Exceptions (off unless hours are given): 2011-06-11 to 2011-06-12 08:00-12:00, 13:00-17:00, 2011-06-18 to 2011-06-19 08:00-12:00, 13:00-17:00, 2011-06-25 to 2011-06-26 08:00-12:00, 13:00-17:00, 2011-07-02 to 2011-07-03 08:00-12:00, 13:00-17:00, 2011-07-09 to 2011-07-10 08:00-12:00, 13:00-17:00, 2011-07-16 to 2011-07-17 08:00-12:00, 13:00-17:00, 2011-07-30 to 2011-07-31 08:00-12:00, 13:00-17:00, 2011-08-06 to 2011-08-07 08:00-12:00, 13:00-17:00.

## Resources

| Resource |
| --- |
| 美工 |
| 江红 |
| 颜梅香 |
| 何明旺 |
| 唐亚军 |

## Schedule

| ID | WBS | Task | Type | Duration | Start | Finish | Predecessors | Total slack | Free slack | Constraint | Resources | Work | Text23 |
| --- | --- | --- | --- | --- | --- | --- | --- | --- | --- | --- | --- | --- | --- |
| 1 | 1 | **项目组建设** |  | 2d | 2011-06-11 08:00 | 2011-06-12 17:00 |  | 58d |  |  | 颜梅香 | 32h |  |
| 2 | 1.1 | 项目组角色分工和工作内容 |  | 1d | 2011-06-11 08:00 | 2011-06-11 17:00 |  | 122d | 0d | start no earlier than 2011-06-11 08:00 | 何明旺 | 8h |  |
| 3 | 1.2 | 定义和建立项目中相关制度 |  | 1d | 2011-06-12 08:00 | 2011-06-12 17:00 | 2 | 122d |  | start no earlier than 2011-06-12 08:00 | 江红 | 8h |  |
| 4 | 2 | **项目立项/启动** |  | 6d | 2011-06-13 08:00 | 2011-06-18 17:00 |  | 0d |  |  | 颜梅香 | 152h |  |
| 5 | 2.1 | 准备项目资源 |  | 2d | 2011-06-13 08:00 | 2011-06-14 17:00 |  | 0d |  | start no earlier than 2011-06-13 08:00 | 颜梅香 | 16h |  |
| 6 | 2.2 | 召开项目启动准备会 |  | 1d | 2011-06-15 08:00 | 2011-06-15 17:00 | 5 | 0d |  |  | 何明旺; 江红; 唐亚军; 颜梅香 | 32h |  |
| 7 | 2.3 | **准备立项系列文档** |  | 2d | 2011-06-16 08:00 | 2011-06-17 17:00 |  | 0d |  |  | 何明旺; 江红 | 48h |  |
| 8 | 2.3.1 | 项目章程 |  | 0.5d | 2011-06-16 08:00 | 2011-06-16 12:00 | 6 | 0d |  | start no earlier than 2011-06-16 08:00 | 何明旺 | 4h | 《项目章程》 |
| 9 | 2.3.2 | 项目分工界面说明 |  | 0.5d | 2011-06-16 13:00 | 2011-06-16 17:00 | 8 | 0d |  |  | 江红 | 4h | 《项目分工界面说明》及附件 |
| 10 | 2.3.3 | 项目计划 |  | 1d | 2011-06-17 08:00 | 2011-06-17 17:00 | 9 | 0d |  |  | 何明旺 | 8h | 《项目计划》（第一版） |
| 11 | 2.4 | 召开项目启动会 |  | 1d | 2011-06-18 08:00 | 2011-06-18 17:00 | 7 | 0d |  | start no earlier than 2011-01-07 08:00 | 何明旺 | 8h | 《项目启动会会议纪要》 |
| 12 | 2.5 | 项目启动完成 | milestone | 0d | 2011-06-18 17:00 | 2011-06-18 17:00 | 11 | 0d |  |  |  |  |  |
| 13 | 3 | **系统环境准备** |  | 2d | 2011-06-19 08:00 | 2011-06-20 17:00 | 4 | 0d |  |  | 颜梅香; 江红; 何明旺 | 68h |  |
| 14 | 3.1 | **开发环境准备** |  | 2d | 2011-06-19 08:00 | 2011-06-20 17:00 |  |  |  |  |  | 20h |  |
| 15 | 3.1.1 | 硬件资源准备 |  | 0.5d | 2011-06-19 08:00 | 2011-06-19 12:00 |  | 0.5d | 0d | start no earlier than 2011-06-19 08:00 | 颜梅香 | 4h |  |
| 16 | 3.1.2 | 网络及其他相关资源准备 |  | 1d | 2011-06-19 13:00 | 2011-06-20 12:00 | 15 | 0.5d |  |  | 颜梅香 | 8h |  |
| 17 | 3.1.3 | 软件及相关介质准备 |  | 0.5d | 2011-06-20 08:00 | 2011-06-20 12:00 |  | 114.5d |  | start no earlier than 2011-06-20 08:00 | 何明旺; 江红 | 8h |  |
| 18 | 4 | **需求调研与分析** |  | 5d | 2011-06-21 08:00 | 2011-06-25 17:00 | 4 |  |  |  | 颜梅香 | 72h |  |
| 19 | 4.1 | 需求调研及需求规格编写 | manual | 2d | 2011-06-21 08:00 | 2011-06-22 17:00 |  |  |  |  | 颜梅香 | 16h |  |
| 20 | 4.2 | 需求分析整理 |  | 2d | 2011-06-23 08:00 | 2011-06-24 17:00 | 19 | 1d | 0d |  | 颜梅香 | 16h |  |
| 21 | 4.3 | 需求分析确认 |  | 1d | 2011-06-25 08:00 | 2011-06-25 17:00 | 20 | 45d |  | start no earlier than 2011-06-25 08:00 |  |  | 《需求分析说明书》 |
| 22 | 5 | **系统设计** |  | 4d | 2011-06-26 08:00 | 2011-06-29 17:00 | 18 |  |  |  | 江红; 何明旺 | 144h |  |
| 23 | 5.1 | 开发环境的部署 |  | 1d | 2011-06-26 08:00 | 2011-06-26 17:00 |  | 108d |  | start no earlier than 2011-06-26 08:00 | 江红 | 8h |  |
| 24 | 5.2 | **概要设计** |  | 3d | 2011-06-27 08:00 | 2011-06-29 17:00 |  |  |  |  | 何明旺 | 40h |  |
| 25 | 5.2.1 | 概要设计文档编写 |  | 2d | 2011-06-27 08:00 | 2011-06-28 17:00 |  | 0d |  | start no earlier than 2011-06-27 08:00 | 何明旺 | 16h |  |
| 26 | 5.2.2 | 概要设计评审 | milestone | 1d | 2011-06-29 08:00 | 2011-06-29 17:00 | 25 | 0d |  |  |  |  | 《概要设计说明书》 |
| 27 | 5.3 | 美工设计 |  | 4d | 2011-06-26 08:00 | 2011-06-29 17:00 | 28 | 0d |  |  | 美工 | 32h |  |
| 28 | 5.4 | 系统设计完成 | milestone | 0d | 2011-06-26 08:00 | 2011-06-26 08:00 |  | 0d |  |  |  |  |  |

Notes:
- 14: 此任务必须在模块开发及单元测试之前完成
- 19: 在需求调研之前，要制定计划，让需要配合调研的相关人员（包括客户）能及时配合
- 21: 应包括:客户,销售售前,PMO TL审核确认.
- 24: 概要设计和系统分析是交错进行的，边进行系统分析，就相应的整理出系统的概要设计

| ID | WBS | Task | Type | Duration | Start | Finish | Predecessors | Complete | Remaining | Actual start | Total slack | Free slack | Constraint | Work | Actual work | Text23 |
| --- | --- | --- | --- | --- | --- | --- | --- | --- | --- | --- | --- | --- | --- | --- | --- | --- |
| 29 | 6 | **模块开发及单元测试** |  | 41d | 2011-06-27 08:00 | 2011-08-08 17:00 |  |  | 41d | 2011-05-05 08:00 |  |  |  | 364h | 52h |  |
| 30 | 6.1 | **后台管理** |  | 12d | 2011-06-27 08:00 A | 2011-07-08 17:00 |  |  | 12d |  |  |  |  | 168h | 52h |  |
| 31 | 6.1.1 | **字典设置** |  | 1d | 2011-06-27 08:00 A | 2011-06-27 17:00 |  |  | 1d |  | 11d |  |  | 16h | 8h |  |
| 32 | 6.1.1.1 | 模块开发 |  | 0.5d | 2011-06-27 08:00 | 2011-06-27 12:00 |  |  |  |  | 11d | 0d | start no earlier than 2011-06-27 08:00 | 4h |  |  |
| 33 | 6.1.1.2 | 单元测试 |  | 0.5d | 2011-06-27 13:00 | 2011-06-27 17:00 | 32 |  |  |  | 11d |  |  | 4h |  | 《单元测试报告》 |
| 34 | 6.1.1.3 | 代码审查 | milestone | 0d | 2011-06-27 08:00 A | 2011-06-27 08:00 A |  | 100% |  |  |  |  | start no earlier than 2011-06-27 08:00 |  |  |  |
| 35 | 6.1.2 | **地区设置** |  | 1d | 2011-06-28 08:00 | 2011-06-28 17:00 |  |  |  |  | 10d |  |  | 16h | 4h |  |
| 36 | 6.1.2.1 | 模块开发 |  | 0.5d | 2011-06-28 08:00 | 2011-06-28 12:00 |  |  |  |  | 10d | 0d | start no earlier than 2011-06-28 08:00 | 4h |  |  |
| 37 | 6.1.2.2 | 单元测试 |  | 0.5d | 2011-06-28 13:00 | 2011-06-28 17:00 | 36 |  |  |  | 10d |  |  | 4h |  | 《单元测试报告》 |
| 38 | 6.1.2.3 | 代码审查 | milestone | 0d | 2011-06-28 08:00 | 2011-06-28 08:00 |  |  |  |  | 91.5d |  | start no earlier than 2011-06-28 08:00 |  |  |  |
| 39 | 6.1.3 | **会员申请审核** |  | 1d | 2011-06-29 08:00 A | 2011-06-29 17:00 |  |  | 1d |  |  |  |  | 12h |  |  |
| 40 | 6.1.3.1 | 模块开发 |  | 0.5d | 2011-06-29 08:00 | 2011-06-29 12:00 | 42 |  |  |  | 0d |  |  | 4h |  |  |
| 41 | 6.1.3.2 | 单元测试 |  | 0.5d | 2011-06-29 08:00 A | 2011-06-29 12:00 | 40 |  | 0.5d |  | 0.5d |  |  |  |  | 《单元测试报告》 |
| 42 | 6.1.3.3 | 代码审查 | milestone | 0d | 2011-06-29 08:00 | 2011-06-29 08:00 |  |  |  |  | 0d |  | start no earlier than 2011-06-29 08:00 |  |  |  |
| 43 | 6.1.4 | **会员管理** |  | 2d | 2011-06-30 08:00 A | 2011-07-01 17:00 |  |  | 2d |  |  |  |  | 32h |  |  |
| 44 | 6.1.4.1 | 模块开发 |  | 1d | 2011-06-30 08:00 | 2011-06-30 17:00 |  |  |  |  | 0d |  | start no earlier than 2011-06-30 08:00 | 8h |  |  |
| 45 | 6.1.4.2 | 单元测试 |  | 1d | 2011-07-01 08:00 | 2011-07-01 17:00 | 44 |  |  |  | 0d |  |  | 8h |  | 《单元测试报告》 |
| 46 | 6.1.4.3 | 代码审查 | milestone | 0d | 2011-07-01 17:00 | 2011-07-01 17:00 | 45 |  |  |  | 0d |  |  |  |  |  |
| 47 | 6.1.5 | **广告设置** |  | 2d | 2011-07-02 08:00 A | 2011-07-03 17:00 |  |  | 2d |  |  |  |  | 32h | 16h |  |
| 48 | 6.1.5.1 | 模块开发 |  | 1d | 2011-07-02 08:00 | 2011-07-02 17:00 |  |  |  |  | 0d |  | start no earlier than 2011-07-02 08:00 | 8h |  |  |
| 49 | 6.1.5.2 | 单元测试 |  | 1d | 2011-07-03 08:00 | 2011-07-03 17:00 | 48 |  |  |  | 0d |  | start no earlier than 2011-07-03 08:00 | 8h |  | 《单元测试报告》 |
| 50 | 6.1.5.3 | 代码审查 | milestone | 0d | 2011-07-03 17:00 | 2011-07-03 17:00 | 49 |  |  |  | 0d |  |  |  |  |  |
| 51 | 6.1.6 | **问题管理** |  | 2d | 2011-07-04 08:00 A | 2011-07-05 17:00 |  |  | 2d |  |  |  |  | 32h | 16h |  |
| 52 | 6.1.6.1 | 模块开发 |  | 1d | 2011-07-04 08:00 | 2011-07-04 17:00 |  |  |  |  | 0d |  | start no earlier than 2011-07-04 08:00 | 8h |  |  |
| 53 | 6.1.6.2 | 单元测试 |  | 1d | 2011-07-05 08:00 | 2011-07-05 17:00 | 52 |  |  |  | 0d |  |  | 8h |  | 《单元测试报告》 |
| 54 | 6.1.6.3 | 代码审查 | milestone | 0d | 2011-07-05 17:00 | 2011-07-05 17:00 | 53 |  |  |  | 0d |  |  |  |  |  |

Notes:
- 29: 可以根据阶段不同,个性制定阶段以及模块开发任务.
- 34: 技术经理审查 ，审查重点:涉及数据库性能SQL语句、应用逻辑等代码
- 38: 技术经理审查 ，审查重点:涉及数据库性能SQL语句、应用逻辑等代码
- 42: 技术经理审查 ，审查重点:涉及数据库性能SQL语句、应用逻辑等代码
- 46: 技术经理审查 ，审查重点:涉及数据库性能SQL语句、应用逻辑等代码
- 50: 技术经理审查 ，审查重点:涉及数据库性能SQL语句、应用逻辑等代码
- 54: 技术经理审查 ，审查重点:涉及数据库性能SQL语句、应用逻辑等代码

| ID | WBS | Task | Type | Duration | Start | Finish | Predecessors | Remaining | Total slack | Constraint | Work | Actual work | Text23 |
| --- | --- | --- | --- | --- | --- | --- | --- | --- | --- | --- | --- | --- | --- |
| 55 | 6.1.7 | **话题管理** |  | 1d | 2011-07-06 08:00 A | 2011-07-06 17:00 |  | 1d |  |  | 16h | 8h |  |
| 56 | 6.1.7.1 | 模块开发 |  | 0.5d | 2011-07-06 08:00 | 2011-07-06 12:00 |  |  | 0d | start no earlier than 2011-07-06 08:00 | 4h |  |  |
| 57 | 6.1.7.2 | 单元测试 |  | 0.5d | 2011-07-06 13:00 | 2011-07-06 17:00 | 56 |  | 0d |  | 4h |  | 《单元测试报告》 |
| 58 | 6.1.7.3 | 代码审查 | milestone | 0d | 2011-07-06 17:00 | 2011-07-06 17:00 | 57 |  | 0d |  |  |  |  |
| 59 | 6.1.8 | **邀请会员** |  | 1d | 2011-07-08 08:00 | 2011-07-08 17:00 |  |  |  |  | 12h |  |  |
| 60 | 6.1.8.1 | 模块开发 |  | 0.5d | 2011-07-08 08:00 | 2011-07-08 12:00 |  |  | 0d | start no earlier than 2011-07-08 08:00 |  |  |  |
| 61 | 6.1.8.2 | 单元测试 |  | 0.5d | 2011-07-08 13:00 | 2011-07-08 17:00 | 60 |  | 0d |  | 4h |  | 《单元测试报告》 |
| 62 | 6.1.8.3 | 代码审查 | milestone | 0d | 2011-07-08 17:00 | 2011-07-08 17:00 | 61 |  | 0d |  |  |  |  |
| 63 | 6.2 | **个人(品牌)设置** |  | 4d | 2011-07-09 08:00 | 2011-07-12 17:00 |  |  |  |  |  |  |  |
| 64 | 6.2.1 | **基本资料、密码** |  | 1d | 2011-07-09 08:00 | 2011-07-09 17:00 |  |  |  |  |  |  |  |
| 65 | 6.2.1.1 | 模块开发 |  | 0.5d | 2011-07-09 08:00 | 2011-07-09 12:00 |  |  | 0d | start no earlier than 2011-07-09 08:00 |  |  |  |
| 66 | 6.2.1.2 | 单元测试 |  | 0.5d | 2011-07-09 13:00 | 2011-07-09 17:00 | 65 |  | 0d |  |  |  | 《单元测试报告》 |
| 67 | 6.2.1.3 | 代码审查 | milestone | 0d | 2011-07-09 17:00 | 2011-07-09 17:00 | 66 |  | 0d |  |  |  | 《单元测试报告》 |
| 68 | 6.2.2 | **头像、个性网址** |  | 1d | 2011-07-10 08:00 | 2011-07-10 17:00 |  |  |  |  |  |  |  |
| 69 | 6.2.2.1 | 模块开发 |  | 0.5d | 2011-07-10 13:00 | 2011-07-10 17:00 | 71 |  | 0d |  |  |  |  |
| 70 | 6.2.2.2 | 单元测试 |  | 0.5d | 2011-07-10 08:00 | 2011-07-10 12:00 |  |  | 0d | start no earlier than 2011-07-10 08:00 |  |  |  |
| 71 | 6.2.2.3 | 代码审查 | milestone | 0d | 2011-07-10 12:00 | 2011-07-10 12:00 | 70 |  | 0d |  |  |  | 《单元测试报告》 |
| 72 | 6.2.3 | **邮件通知** |  | 1d | 2011-07-11 08:00 | 2011-07-11 17:00 |  |  |  |  |  |  |  |
| 73 | 6.2.3.1 | 模块开发 |  | 0.5d | 2011-07-11 13:00 | 2011-07-11 17:00 | 75 |  | 0d |  |  |  |  |
| 74 | 6.2.3.2 | 单元测试 |  | 0.5d | 2011-07-11 08:00 | 2011-07-11 12:00 |  |  | 0d | start no earlier than 2011-07-11 08:00 |  |  |  |
| 75 | 6.2.3.3 | 代码审查 | milestone | 0d | 2011-07-11 12:00 | 2011-07-11 12:00 | 74 |  | 0d |  |  |  | 《单元测试报告》 |
| 76 | 6.2.4 | **私信设置** |  | 1d | 2011-07-12 08:00 | 2011-07-12 17:00 |  |  |  |  |  |  |  |
| 77 | 6.2.4.1 | 模块开发 |  | 0.5d | 2011-07-12 13:00 | 2011-07-12 17:00 | 79 |  | 0d |  |  |  |  |
| 78 | 6.2.4.2 | 单元测试 |  | 0.5d | 2011-07-12 08:00 | 2011-07-12 12:00 |  |  | 0d | start no earlier than 2011-07-12 08:00 |  |  |  |
| 79 | 6.2.4.3 | 代码审查 | milestone | 0d | 2011-07-12 12:00 | 2011-07-12 12:00 | 78 |  | 0d |  |  |  | 《单元测试报告》 |

Notes:
- 58: 技术经理审查 ，审查重点:涉及数据库性能SQL语句、应用逻辑等代码
- 62: 技术经理审查 ，审查重点:涉及数据库性能SQL语句、应用逻辑等代码

| ID | WBS | Task | Type | Duration | Start | Finish | Predecessors | Total slack | Free slack | Constraint | Resources | Work | Text23 |
| --- | --- | --- | --- | --- | --- | --- | --- | --- | --- | --- | --- | --- | --- |
| 80 | 6.3 | **注册和登录** |  | 2d | 2011-07-13 08:00 | 2011-07-14 17:00 |  |  |  |  |  |  |  |
| 81 | 6.3.1 | **注册** |  | 1d | 2011-07-13 08:00 | 2011-07-13 17:00 |  |  |  |  |  |  |  |
| 82 | 6.3.1.1 | 模块开发 |  | 0.5d | 2011-07-13 08:00 | 2011-07-13 12:00 |  | 0d |  | start no earlier than 2011-07-13 08:00 |  |  |  |
| 83 | 6.3.1.2 | 单元测试 |  | 0.5d | 2011-07-13 13:00 | 2011-07-13 17:00 | 82 | 0d |  |  |  |  | 《单元测试报告》 |
| 84 | 6.3.1.3 | 代码审查 | milestone | 0d | 2011-07-13 17:00 | 2011-07-13 17:00 | 83 | 0d |  |  |  |  | 《单元测试报告》 |
| 85 | 6.3.2 | **登录** |  | 1d | 2011-07-14 08:00 | 2011-07-14 17:00 |  |  |  |  |  |  |  |
| 86 | 6.3.2.1 | 模块开发 |  | 0.5d | 2011-07-14 08:00 | 2011-07-14 12:00 |  | 92.5d |  | start no earlier than 2011-07-14 08:00 |  |  |  |
| 87 | 6.3.2.2 | 单元测试 |  | 0.5d | 2011-07-14 08:00 | 2011-07-14 12:00 |  | 0.5d | 0d | start no earlier than 2011-07-14 08:00 |  |  |  |
| 88 | 6.3.2.3 | 代码审查 | milestone | 0d | 2011-07-14 12:00 | 2011-07-14 12:00 | 87 | 0.5d |  |  |  |  | 《单元测试报告》 |
| 89 | 6.4 | **网站首页** |  | 9d | 2011-07-15 08:00 | 2011-07-25 17:00 |  |  |  |  |  | 12h |  |
| 90 | 6.4.1 | **添加问题** |  | 2d | 2011-07-15 08:00 | 2011-07-16 17:00 |  |  |  |  |  |  |  |
| 91 | 6.4.1.1 | 模块开发 |  | 1d | 2011-07-15 08:00 | 2011-07-15 17:00 |  | 91d |  | start no earlier than 2011-07-15 08:00 |  |  |  |
| 92 | 6.4.1.2 | 单元测试 |  | 1d | 2011-07-16 08:00 | 2011-07-16 17:00 |  | 0d |  | start no earlier than 2011-07-16 08:00 |  |  |  |
| 93 | 6.4.1.3 | 代码审查 | milestone | 0d | 2011-07-16 17:00 | 2011-07-16 17:00 | 92 | 0d |  |  |  |  | 《单元测试报告》 |
| 94 | 6.4.2 | **最新问题** |  | 1d | 2011-07-17 08:00 | 2011-07-17 17:00 |  |  |  |  |  |  |  |
| 95 | 6.4.2.1 | 模块开发 |  | 0.5d | 2011-07-17 08:00 | 2011-07-17 12:00 |  | 0d |  | start no earlier than 2011-07-17 08:00 |  |  |  |
| 96 | 6.4.2.2 | 单元测试 |  | 0.5d | 2011-07-17 13:00 | 2011-07-17 17:00 | 95 | 0d |  |  |  |  | 《单元测试报告》 |
| 97 | 6.4.2.3 | 代码审查 | milestone | 0d | 2011-07-17 17:00 | 2011-07-17 17:00 | 96 | 0d |  |  |  |  | 《单元测试报告》 |
| 98 | 6.4.3 | **热门问题** |  | 1d | 2011-07-18 08:00 | 2011-07-18 17:00 |  |  |  |  |  | 4h |  |
| 99 | 6.4.3.1 | 模块开发 |  | 0.5d | 2011-05-18 08:00 | 2011-05-18 12:00 |  | 55d | 54.5d | start no earlier than 2011-05-18 08:00 | 唐亚军 | 4h |  |
| 100 | 6.4.3.2 | 单元测试 |  | 0.5d | 2011-07-18 08:00 | 2011-07-18 12:00 | 99 | 0.5d | 0d |  |  |  | 《单元测试报告》 |
| 101 | 6.4.3.3 | 代码审查 | milestone | 0d | 2011-07-18 12:00 | 2011-07-18 12:00 | 100 | 0.5d |  |  |  |  |  |
| 102 | 6.4.4 | **邀请好友** |  | 1d | 2011-07-19 08:00 | 2011-07-19 17:00 |  |  |  |  |  | 4h |  |
| 103 | 6.4.4.1 | 模块开发 |  | 0.5d | 2011-07-19 08:00 | 2011-07-19 12:00 |  | 0d |  | start no earlier than 2011-07-19 08:00 | 唐亚军 | 4h |  |
| 104 | 6.4.4.2 | 单元测试 |  | 0.5d | 2011-07-19 13:00 | 2011-07-19 17:00 | 103 | 0d |  |  |  |  | 《单元测试报告》 |
| 105 | 6.4.4.3 | 代码审查 | milestone | 0d | 2011-07-19 17:00 | 2011-07-19 17:00 | 104 | 0d |  |  |  |  |  |

Notes:
- 101: 技术经理审查 ，审查重点:涉及数据库性能SQL语句、应用逻辑等代码
- 105: 技术经理审查 ，审查重点:涉及数据库性能SQL语句、应用逻辑等代码

| ID | WBS | Task | Type | Duration | Start | Finish | Predecessors | Total slack | Constraint | Resources | Work | Text23 |
| --- | --- | --- | --- | --- | --- | --- | --- | --- | --- | --- | --- | --- |
| 106 | 6.4.5 | **可能感兴趣的人** |  | 1d | 2011-07-20 08:00 | 2011-07-20 17:00 |  |  |  |  | 4h |  |
| 107 | 6.4.5.1 | 模块开发 |  | 0.5d | 2011-07-20 08:00 | 2011-07-20 12:00 |  | 0d | start no earlier than 2011-07-20 08:00 | 唐亚军 | 4h |  |
| 108 | 6.4.5.2 | 单元测试 |  | 0.5d | 2011-07-20 13:00 | 2011-07-20 17:00 | 107 | 0d |  |  |  | 《单元测试报告》 |
| 109 | 6.4.5.3 | 代码审查 | milestone | 0d | 2011-07-20 17:00 | 2011-07-20 17:00 | 108 | 0d |  |  |  |  |
| 110 | 6.4.6 | **关注的品牌** |  | 1d | 2011-07-21 08:00 | 2011-07-21 17:00 |  |  |  |  |  |  |
| 111 | 6.4.6.1 | 模块开发 |  | 0.5d | 2011-07-21 08:00 | 2011-07-21 12:00 |  | 0d | start no earlier than 2011-07-21 08:00 |  |  |  |
| 112 | 6.4.6.2 | 单元测试 |  | 0.5d | 2011-07-21 13:00 | 2011-07-21 17:00 | 111 | 0d |  |  |  | 《单元测试报告》 |
| 113 | 6.4.6.3 | 代码审查 | milestone | 0d | 2011-07-21 17:00 | 2011-07-21 17:00 | 112 | 0d |  |  |  |  |
| 114 | 6.5 | **会员首页** |  | 4d | 2011-07-26 08:00 | 2011-07-29 17:00 |  |  |  |  | 112h |  |
| 115 | 6.5.1 | **向他提问、关注他** |  | 1d | 2011-07-26 08:00 | 2011-07-26 17:00 |  |  |  |  | 24h |  |
| 116 | 6.5.1.1 | 模块开发 |  | 0.5d | 2011-07-26 08:00 | 2011-07-26 12:00 |  | 0d | start no earlier than 2011-07-26 08:00 |  | 16h |  |
| 117 | 6.5.1.2 | 单元测试 |  | 0.5d | 2011-07-26 13:00 | 2011-07-26 17:00 | 116 | 0d |  |  | 8h | 《单元测试报告》 |
| 118 | 6.5.1.3 | 代码审查 | milestone | 0d | 2011-07-26 08:00 | 2011-07-26 08:00 |  | 85d | start no earlier than 2011-07-26 08:00 |  |  |  |
| 119 | 6.5.2 | **他问过和回答的问题** |  | 1d | 2011-07-27 08:00 | 2011-07-27 17:00 |  |  |  |  | 16h |  |
| 120 | 6.5.2.1 | 模块开发 |  | 0.5d | 2011-07-27 08:00 | 2011-07-27 12:00 |  | 0d | start no earlier than 2011-07-27 08:00 |  | 8h |  |
| 121 | 6.5.2.2 | 单元测试 |  | 0.5d | 2011-07-27 13:00 | 2011-07-27 17:00 | 120 | 0d |  |  | 8h | 《单元测试报告》 |
| 122 | 6.5.2.3 | 代码审查 | milestone | 0d | 2011-07-27 08:00 | 2011-07-27 08:00 |  | 84d | start no earlier than 2011-07-27 08:00 |  |  |  |
| 123 | 6.5.3 | **他关注和关注他的人** |  | 1d | 2011-07-28 08:00 | 2011-07-28 17:00 |  |  |  |  | 48h |  |
| 124 | 6.5.3.1 | 模块开发 |  | 0.5d | 2011-07-28 08:00 | 2011-07-28 12:00 |  | 0d | start no earlier than 2011-07-28 08:00 |  | 32h |  |
| 125 | 6.5.3.2 | 单元测试 |  | 0.5d | 2011-07-28 13:00 | 2011-07-28 17:00 | 124 | 0d |  |  | 16h | 《单元测试报告》 |
| 126 | 6.5.3.3 | 代码审查 | milestone | 0d | 2011-07-28 17:00 | 2011-07-28 17:00 | 125 | 0d |  |  |  |  |
| 127 | 6.5.4 | **关注的话题** |  | 1d | 2011-07-29 08:00 | 2011-07-29 17:00 |  |  |  |  | 24h |  |
| 128 | 6.5.4.1 | 模块开发 |  | 0.5d | 2011-07-29 08:00 | 2011-07-29 12:00 |  | 0d | start no earlier than 2011-07-29 08:00 |  | 16h |  |
| 129 | 6.5.4.2 | 单元测试 |  | 0.5d | 2011-07-29 13:00 | 2011-07-29 17:00 | 128 | 0d |  |  | 8h | 《单元测试报告》 |
| 130 | 6.5.4.3 | 代码审查 | milestone | 0d | 2011-07-29 17:00 | 2011-07-29 17:00 | 129 | 0d |  |  |  |  |

Notes:
- 109: 技术经理审查 ，审查重点:涉及数据库性能SQL语句、应用逻辑等代码
- 113: 技术经理审查 ，审查重点:涉及数据库性能SQL语句、应用逻辑等代码
- 118: 技术经理审查 ，审查重点:涉及数据库性能SQL语句、应用逻辑等代码
- 122: 技术经理审查 ，审查重点:涉及数据库性能SQL语句、应用逻辑等代码
- 126: 技术经理审查 ，审查重点:涉及数据库性能SQL语句、应用逻辑等代码
- 130: 技术经理审查 ，审查重点:涉及数据库性能SQL语句、应用逻辑等代码

| ID | WBS | Task | Type | Duration | Start | Finish | Predecessors | Complete | Remaining | Total slack | Constraint | Work | Text23 |
| --- | --- | --- | --- | --- | --- | --- | --- | --- | --- | --- | --- | --- | --- |
| 131 | 6.6 | **品牌首页** |  | 3d | 2011-07-30 08:00 A | 2011-08-01 17:00 |  |  | 3d |  |  | 72h |  |
| 132 | 6.6.1 | **添加话题** |  | 0d | 2011-07-30 08:00 A | 2011-07-30 08:00 |  |  | 0d |  |  |  |  |
| 133 | 6.6.1.1 | 模块开发 | milestone | 0d | 2011-07-30 08:00 | 2011-07-30 08:00 |  |  |  | 0d | start no earlier than 2011-07-30 08:00 |  |  |
| 134 | 6.6.1.2 | 单元测试 | milestone | 0d | 2011-07-30 08:00 | 2011-07-30 08:00 | 133 |  |  | 0d |  |  | 《单元测试报告》 |
| 135 | 6.6.1.3 | 代码审查 | milestone | 0d | 2011-07-30 08:00 A | 2011-07-30 08:00 A |  | 100% |  |  | start no earlier than 2011-02-23 08:00 |  |  |
| 136 | 6.6.2 | **相关品牌** |  | 1d | 2011-07-30 08:00 | 2011-07-30 17:00 |  |  |  |  |  | 16h |  |
| 137 | 6.6.2.1 | 模块开发 |  | 0.5d | 2011-07-30 08:00 | 2011-07-30 12:00 |  |  |  | 0d | start no earlier than 2011-07-30 08:00 | 8h |  |
| 138 | 6.6.2.2 | 单元测试 |  | 0.5d | 2011-07-30 13:00 | 2011-07-30 17:00 | 137 |  |  | 0d |  | 8h | 《单元测试报告》 |
| 139 | 6.6.2.3 | 代码审查 | milestone | 0d | 2011-07-30 08:00 | 2011-07-30 08:00 |  |  |  | 83d | start no earlier than 2011-07-30 08:00 |  |  |
| 140 | 6.6.3 | **关注的人** |  | 1d | 2011-07-31 08:00 A | 2011-07-31 17:00 |  |  | 1d |  |  | 8h |  |
| 141 | 6.6.3.1 | 模块开发 |  | 0.5d | 2011-07-31 08:00 | 2011-07-31 12:00 | 143 |  |  | 0d | start no earlier than 2011-07-31 08:00 | 8h |  |
| 142 | 6.6.3.2 | 单元测试 |  | 0.5d | 2011-07-31 08:00 A | 2011-07-31 12:00 | 141 |  | 0.5d | 0.5d |  |  | 《单元测试报告》 |
| 143 | 6.6.3.3 | 代码审查 | milestone | 0d | 2011-07-31 08:00 A | 2011-07-31 08:00 A |  | 100% |  |  | start no earlier than 2011-02-28 08:00 |  |  |
| 144 | 6.6.4 | **问题列表** |  | 1d | 2011-08-01 08:00 | 2011-08-01 17:00 |  |  |  |  |  | 48h |  |
| 145 | 6.6.4.1 | 模块开发 |  | 0.5d | 2011-08-01 08:00 | 2011-08-01 12:00 |  |  |  | 0d | start no earlier than 2011-08-01 08:00 | 32h |  |
| 146 | 6.6.4.2 | 单元测试 |  | 0.5d | 2011-08-01 13:00 | 2011-08-01 17:00 | 145 |  |  | 0d |  | 16h | 《单元测试报告》 |
| 147 | 6.6.4.3 | 代码审查 | milestone | 0d | 2011-08-01 17:00 | 2011-08-01 17:00 | 146 |  |  | 0d |  |  |  |
| 148 | 6.7 | **问题首页** |  | 7d | 2011-08-02 08:00 | 2011-08-08 17:00 |  |  |  |  |  |  |  |
| 149 | 6.7.1 | **添加话题** |  | 1d | 2011-08-02 08:00 | 2011-08-02 17:00 |  |  |  |  |  |  |  |
| 150 | 6.7.1.1 | 模块开发 |  | 0.5d | 2011-08-02 08:00 | 2011-08-02 12:00 |  |  |  | 0d | start no earlier than 2011-08-02 08:00 |  |  |
| 151 | 6.7.1.2 | 单元测试 |  | 0.5d | 2011-08-02 13:00 | 2011-08-02 17:00 | 150 |  |  | 0d |  |  | 《单元测试报告》 |
| 152 | 6.7.1.3 | 代码审查 | milestone | 0d | 2011-08-02 17:00 | 2011-08-02 17:00 | 151 |  |  | 0d |  |  | 《单元测试报告》 |
| 153 | 6.7.2 | **加关注、加收藏** |  | 1d | 2011-08-03 08:00 | 2011-08-03 17:00 |  |  |  |  |  |  |  |
| 154 | 6.7.2.1 | 模块开发 |  | 0.5d | 2011-08-03 08:00 | 2011-08-03 12:00 |  |  |  | 0d | start no earlier than 2011-08-03 08:00 |  |  |
| 155 | 6.7.2.2 | 单元测试 |  | 0.5d | 2011-08-03 13:00 | 2011-08-03 17:00 | 154 |  |  | 0d |  |  | 《单元测试报告》 |
| 156 | 6.7.2.3 | 代码审查 | milestone | 0d | 2011-08-03 17:00 | 2011-08-03 17:00 | 155 |  |  | 0d |  |  | 《单元测试报告》 |

Notes:
- 135: 技术经理审查 ，审查重点:涉及数据库性能SQL语句、应用逻辑等代码
- 139: 技术经理审查 ，审查重点:涉及数据库性能SQL语句、应用逻辑等代码
- 143: 技术经理审查 ，审查重点:涉及数据库性能SQL语句、应用逻辑等代码
- 147: 技术经理审查 ，审查重点:涉及数据库性能SQL语句、应用逻辑等代码

| ID | WBS | Task | Type | Duration | Start | Finish | Predecessors | Total slack | Free slack | Constraint | Text23 |
| --- | --- | --- | --- | --- | --- | --- | --- | --- | --- | --- | --- |
| 157 | 6.7.3 | **邀请他人回答** |  | 1d | 2011-08-04 08:00 | 2011-08-04 17:00 |  |  |  |  |  |
| 158 | 6.7.3.1 | 模块开发 |  | 0.5d | 2011-08-04 08:00 | 2011-08-04 12:00 |  | 0d |  | start no earlier than 2011-08-04 08:00 |  |
| 159 | 6.7.3.2 | 单元测试 |  | 0.5d | 2011-08-04 13:00 | 2011-08-04 17:00 | 158 | 0d |  |  | 《单元测试报告》 |
| 160 | 6.7.3.3 | 代码审查 | milestone | 0d | 2011-08-04 17:00 | 2011-08-04 17:00 | 159 | 0d |  |  | 《单元测试报告》 |
| 161 | 6.7.4 | **添加回复** |  | 1d | 2011-08-05 08:00 | 2011-08-05 17:00 |  |  |  |  |  |
| 162 | 6.7.4.1 | 模块开发 |  | 0.5d | 2011-05-05 08:00 | 2011-05-05 12:00 |  | 80d | 79.5d | start no earlier than 2011-05-05 08:00 |  |
| 163 | 6.7.4.2 | 单元测试 |  | 0.5d | 2011-08-05 08:00 | 2011-08-05 12:00 | 162 | 0.5d | 0d |  | 《单元测试报告》 |
| 164 | 6.7.4.3 | 代码审查 | milestone | 0d | 2011-08-05 12:00 | 2011-08-05 12:00 | 163 | 0.5d |  |  | 《单元测试报告》 |
| 165 | 6.7.5 | **给回复添加评论** |  | 1d | 2011-08-06 08:00 | 2011-08-06 17:00 |  |  |  |  |  |
| 166 | 6.7.5.1 | 模块开发 |  | 0.5d | 2011-08-06 08:00 | 2011-08-06 12:00 |  | 0d |  | start no earlier than 2011-08-06 08:00 |  |
| 167 | 6.7.5.2 | 单元测试 |  | 0.5d | 2011-08-06 13:00 | 2011-08-06 17:00 | 166 | 0d |  |  | 《单元测试报告》 |
| 168 | 6.7.5.3 | 代码审查 | milestone | 0d | 2011-08-06 17:00 | 2011-08-06 17:00 | 167 | 0d |  |  | 《单元测试报告》 |
| 169 | 6.7.6 | **投票、感谢作者、没有帮助** |  | 1d | 2011-08-07 08:00 | 2011-08-07 17:00 |  |  |  |  |  |
| 170 | 6.7.6.1 | 模块开发 |  | 0.5d | 2011-08-07 08:00 | 2011-08-07 12:00 |  | 0d |  | start no earlier than 2011-08-07 08:00 |  |
| 171 | 6.7.6.2 | 单元测试 |  | 0.5d | 2011-08-07 13:00 | 2011-08-07 17:00 | 170 | 0d |  |  | 《单元测试报告》 |
| 172 | 6.7.6.3 | 代码审查 | milestone | 0d | 2011-08-07 17:00 | 2011-08-07 17:00 | 171 | 0d |  |  | 《单元测试报告》 |
| 173 | 6.7.7 | **问题状态** |  | 1d | 2011-08-08 08:00 | 2011-08-08 17:00 |  |  |  |  |  |
| 174 | 6.7.7.1 | 模块开发 |  | 0.5d | 2011-08-08 08:00 | 2011-08-08 12:00 |  | 0d |  | start no earlier than 2011-08-08 08:00 |  |
| 175 | 6.7.7.2 | 单元测试 |  | 0.5d | 2011-08-08 13:00 | 2011-08-08 17:00 | 174 | 0d |  |  | 《单元测试报告》 |
| 176 | 6.7.7.3 | 代码审查 | milestone | 0d | 2011-08-08 17:00 | 2011-08-08 17:00 | 175 | 0d |  |  | 《单元测试报告》 |
| 177 | 6.7.8 | **相关问题** |  | 0d | 2011-08-08 08:00 | 2011-08-08 08:00 |  |  |  |  |  |
| 178 | 6.7.8.1 | 模块开发 | milestone | 0d | 2011-08-08 08:00 | 2011-08-08 08:00 |  | 0d |  | start no earlier than 2011-08-08 08:00 |  |
| 179 | 6.7.8.2 | 单元测试 | milestone | 0d | 2011-08-08 08:00 | 2011-08-08 08:00 | 178 | 0d |  |  | 《单元测试报告》 |
| 180 | 6.7.8.3 | 代码审查 | milestone | 0d | 2011-08-08 08:00 | 2011-08-08 08:00 | 179 | 0d |  |  | 《单元测试报告》 |
| 181 | 6.8 | 系统开发完成 | milestone | 0d | 2011-08-08 08:00 | 2011-08-08 08:00 |  | 74d |  | start no earlier than 2011-08-08 08:00 |  |

| ID | WBS | Task | Type | Duration | Start | Finish | Predecessors | Total slack | Free slack | Constraint | Resources | Work | Text23 |
| --- | --- | --- | --- | --- | --- | --- | --- | --- | --- | --- | --- | --- | --- |
| 182 | 7 | **系统测试** |  | 2d | 2011-08-09 08:00 | 2011-08-10 17:00 |  |  |  |  | 江红; 何明旺 | 32h |  |
| 183 | 7.1 | **系统测试** |  | 1d | 2011-08-09 08:00 | 2011-08-09 17:00 |  |  |  |  |  |  |  |
| 184 | 7.1.1 | 测试方案（用例） |  | 0.5d | 2011-08-09 08:00 | 2011-08-09 12:00 |  | 72.5d |  | start no earlier than 2011-08-09 08:00 |  |  | 《系统测试方案》 |
| 185 | 7.1.2 | 系统测试 |  | 0.5d | 2011-08-09 08:00 | 2011-08-09 12:00 |  | 0.5d | 0d | start no earlier than 2011-08-09 08:00 |  |  |  |
| 186 | 7.1.3 | 确认测试报告 | milestone | 0d | 2011-08-09 12:00 | 2011-08-09 12:00 | 185 | 0.5d |  |  |  |  | 《系统测试报告》 |
| 187 | 7.2 | **用户测试** |  | 1d | 2011-08-10 08:00 | 2011-08-10 17:00 | 183 |  |  |  |  |  |  |
| 188 | 7.2.1 | 测试方案（用例） |  | 0.5d | 2011-08-10 08:00 | 2011-08-10 12:00 |  | 0d |  |  |  |  |  |
| 189 | 7.2.2 | 用户测试 |  | 0.5d | 2011-08-10 13:00 | 2011-08-10 17:00 | 188 | 0d |  |  |  |  |  |
| 190 | 7.2.3 | 确认测试报告 | milestone | 0d | 2011-08-10 17:00 | 2011-08-10 17:00 | 189 | 0d |  |  |  |  |  |
| 191 | 7.3 | 系统测试完成 | milestone | 0d | 2011-08-10 08:00 | 2011-08-10 08:00 |  | 72d |  | start no earlier than 2011-08-10 08:00 |  |  |  |
| 192 | 8 | **客户培训** |  | 1d | 2011-08-11 08:00 | 2011-08-11 17:00 |  |  |  |  | 颜梅香 | 8h |  |
| 193 | 8.1 | 文档准备 | milestone | 0d | 2011-08-11 08:00 | 2011-08-11 08:00 |  | 0d |  | start no earlier than 2011-08-11 08:00 |  |  |  |
| 194 | 8.2 | 培训组织 | milestone | 0d | 2011-08-11 08:00 | 2011-08-11 08:00 | 193 | 0d |  | start no earlier than 2011-06-17 08:00 |  |  |  |
| 195 | 8.3 | 培训 |  | 1d | 2011-08-11 08:00 | 2011-08-11 17:00 | 194 | 0d |  | start no earlier than 2011-06-20 08:00 |  |  |  |
| 196 | 9 | **上线运行** |  | 5d | 2007-01-01 08:00 | 2007-01-05 17:00 |  |  |  |  |  |  |  |
| 197 | 9.1 | 生产环境部署 | manual | 1d | 2007-01-01 08:00 | 2007-01-01 17:00 |  |  |  |  |  |  |  |
| 198 | 9.2 | **应用系统部署上线** |  | 1d | 2007-01-01 08:00 | 2007-01-01 17:00 |  |  |  |  |  |  |  |
| 199 | 9.2.1 | 应用系统部署方案（含计划） | manual | 1d? | 2007-01-01 08:00 | 2007-01-01 17:00 |  |  |  |  |  |  |  |
| 200 | 9.2.2 | 内部准备及评审 | milestone, manual | 1d? | 2007-01-01 08:00 | 2007-01-01 17:00 | 199 |  |  |  |  |  | 《系统上线申请》《系统上线实施方案》 |
| 201 | 9.2.3 | 客户确认 | manual | 1d? | 2007-01-01 08:00 | 2007-01-01 17:00 | 200 |  |  |  |  |  |  |
| 202 | 9.2.4 | 割接上线 | manual | 1d? | 2007-01-01 08:00 | 2007-01-01 17:00 | 201 |  |  |  |  |  |  |
| 203 | 9.2.5 | 割接上线完毕 | manual | 1d | 2007-01-01 08:00 | 2007-01-01 17:00 |  |  |  |  |  |  |  |
| 204 | 9.3 | 系统问题的修改和维护 | manual | 1d? | 2007-01-01 08:00 | 2007-01-01 17:00 |  |  |  |  |  |  |  |
| 205 | 9.4 | 系统试运行阶段总结 | manual | 1d? | 2007-01-01 08:00 | 2007-01-01 17:00 | 204 |  |  |  |  |  |  |

Notes:
- 187: 一定要有客户验收测试通过的签字
- 193: 前期维护开发的模块的文档是否需要补充，待定
- 196: 针对项目的情况，对于有计划的进行试点上线或者分阶段上线的工作内容,请分别制定独立的工作任务进行.
- 198: 此项任务，根据工作需要重复进行

| ID | WBS | Task | Type | Duration | Start | Finish | Predecessors |
| --- | --- | --- | --- | --- | --- | --- | --- |
| 206 | 10 | **系统初验** |  | 7d? | 2007-01-01 08:00 | 2007-01-09 17:00 | 205 |
| 207 | 10.1 | 初验准备 | manual | 1d? | 2007-01-01 08:00 | 2007-01-01 17:00 |  |
| 208 | 10.2 | 系统初验 | manual | 1d? | 2007-01-01 08:00 | 2007-01-01 17:00 | 207 |
| 209 | 10.3 | 系统初验完成 | manual | 1d? | 2007-01-01 08:00 | 2007-01-01 17:00 | 208 |
| 210 | 11 | **维护交接** |  | 1220d? | 2007-01-01 08:00 | 2011-08-11 17:00 |  |
| 211 | 11.1 | 维护交接计划 | manual | 1d? | 2007-01-01 08:00 | 2007-01-01 17:00 |  |
| 212 | 11.2 | 维护交接启动 | manual | 1d? | 2007-01-01 08:00 | 2007-01-01 17:00 |  |
| 213 | 11.3 | 维护交接执行 | manual | 1d? | 2007-01-01 08:00 | 2007-01-01 17:00 | 212 |
| 214 | 11.4 | 维护交接确认 | manual | 1d? | 2007-01-01 08:00 | 2007-01-01 17:00 | 213 |
| 215 | 12 | **项目结项** |  | 5d? | 2007-01-01 08:00 | 2007-01-05 17:00 |  |
| 216 | 12.1 | 项目资料/经验整理 | manual | 1d? | 2007-01-01 08:00 | 2007-01-01 17:00 |  |
| 217 | 12.2 | 项目回收 | manual | 1d? | 2007-01-01 08:00 | 2007-01-01 17:00 |  |
| 218 | 12.3 | 项目结项 | manual | 1d? | 2007-01-01 08:00 | 2007-01-01 17:00 | 217 |
| 219 | 13 | **系统终验** |  | 17d? | 2007-01-01 08:00 | 2007-01-23 17:00 |  |
| 220 | 13.1 | 终验准备 | manual | 1d? | 2007-01-01 08:00 | 2007-01-01 17:00 |  |
| 221 | 13.2 | 系统终验 | manual | 1d? | 2007-01-01 08:00 | 2007-01-01 17:00 | 220 |
| 222 | 13.3 | 系统终验完成 | manual | 1d? | 2007-01-01 08:00 | 2007-01-01 17:00 | 221 |
| 223 | 14 | **项目收尾** |  | 2d? | 2007-01-01 08:00 | 2007-01-02 17:00 |  |
| 224 | 14.1 | 项目资料再回收 | manual | 1d? | 2007-01-01 08:00 | 2007-01-01 17:00 |  |
| 225 | 14.2 | 项目关闭 | manual | 1d? | 2007-01-01 08:00 | 2007-01-01 17:00 | 224 |

Notes:
- 206: 若系统为一次性验收，请将此任务修改为项目一次性验收，并在备注中特别说明
- 207: 包括文档和协调工作
- 209: 对于有初验和终验2个阶段的,按照初验任务制定. / 其他的请按照项目验收制定.
- 213: 1、准备维护文档 / 2、对维护内容进行培训 / 3、逐步交接
- 220: 包括文档和协调工作
- 222: 按照终验任务制定.
- 224: 针对项目终验相关文档及资料的回收
